# 29573_10193_525202122200PM821567-v2013

Schedule from MS Project, 2021-03-31 to 2022-02-07, status date 2022-02-07, costs in $, A marks actual dates.
Sabian Technologies

## Calendars

- Standard: Mon-Fri 08:00-12:00, 13:00-17:00; Sat-Sun off.

## Resources

| Resource | Rate | Cost per use |
| --- | --- | --- |
| Yukio Ashida | 97.5 |  |
| Tom Becher | 67.5 |  |
| Darryl Sandefur | 55.25 |  |
| Kurt Zollinger | 62.5 |  |
| Period 1 Training Costs |  |  |
| Period 1 Managerial Action Costs |  | 40 |
| Period 1 Unallocated Resource Costs |  |  |
| Kelly Sauseda | 55.25 |  |
| Lance Portier | 60.25 |  |
| Period 2 Training Costs |  |  |
| Period 2 Managerial Action Costs |  | 360 |
| Period 2 Unallocated Resource Costs |  |  |
| Period 3 Training Costs |  |  |
| Period 3 Managerial Action Costs |  | 60 |
| Period 3 Unallocated Resource Costs |  |  |
| Period 4 Training Costs |  |  |
| Period 4 Managerial Action Costs |  | 50 |
| Period 4 Unallocated Resource Costs |  | 613.75 |
| Period 5 Training Costs |  |  |
| Period 5 Managerial Action Costs |  |  |
| Period 5 Unallocated Resource Costs |  | 4851 |
| Jovanna Soto | 75 |  |
| George Olmos | 48 |  |
| Norman Micheals | 50 |  |
| Period 6 Training Costs |  |  |
| Period 6 Managerial Action Costs |  | 480 |
| Period 6 Unallocated Resource Costs |  | 4158 |
| Period 7 Training Costs |  |  |
| Period 7 Managerial Action Costs |  | 60 |
| Period 7 Unallocated Resource Costs |  | 4389 |
| Period 8 Training Costs |  |  |
| Period 8 Managerial Action Costs |  | 40 |
| Period 8 Unallocated Resource Costs |  |  |
| Period 9 Training Costs |  |  |
| Period 9 Managerial Action Costs |  | 240 |
| Period 9 Unallocated Resource Costs |  |  |
| Period 10 Training Costs |  |  |
| Period 10 Managerial Action Costs |  | 40 |
| Period 10 Unallocated Resource Costs |  |  |
| Period 11 Training Costs |  |  |
| Period 11 Managerial Action Costs |  | 40 |
| Period 11 Unallocated Resource Costs |  |  |
| Period 12 Training Costs |  |  |
| Period 12 Managerial Action Costs |  |  |
| Period 12 Unallocated Resource Costs |  |  |

## Schedule

| ID | WBS | Task | Duration | Start | Finish | Predecessors | Complete | Baseline start | Baseline finish | Baseline duration | Resources | Work | Actual work | Cost | Baseline cost | Actual cost |
| --- | --- | --- | --- | --- | --- | --- | --- | --- | --- | --- | --- | --- | --- | --- | --- | --- |
| 1 | 1 | **Market Assessment** | 29.25d | 2021-03-31 A | 2021-05-11 A |  | 100% | 2021-03-31 | 2021-06-10 | 51d? |  | 468h | 468h | 37,440 | 27,280 | 37,440 |
| 2 | 1.1 | Evaluate market | 6.69d | 2021-03-31 A | 2021-04-08 A |  | 100% | 2021-03-31 | 2021-04-16 | 12d? | Kurt Zollinger; Yukio Ashida | 107h | 107h | 8,560 | 4,800 | 8,560 |
| 3 | 1.2 | Develop Business opportunity | 8.06d | 2021-04-08 A | 2021-04-20 A | 2 | 100% | 2021-04-16 | 2021-05-06 | 14d? | Yukio Ashida; Kurt Zollinger | 129h | 129h | 10,320 | 10,080 | 10,320 |
| 4 | 1.3 | Customer preference study | 12.12d | 2021-04-20 A | 2021-05-06 A | 3 | 100% | 2021-05-06 | 2021-06-04 | 21d? | Yukio Ashida; Kurt Zollinger | 194h | 194h | 15,520 | 8,400 | 15,520 |
| 5 | 1.4 | Business evaluation (NPV, etc.) | 2.38d | 2021-05-07 A | 2021-05-11 A | 4 | 100% | 2021-06-04 | 2021-06-10 | 4d? | Kurt Zollinger; Yukio Ashida | 38h | 38h | 3,040 | 4,000 | 3,040 |
| 6 | 2 | **Procurement** | 85.56d | 2021-09-01 A | 2021-12-29 A |  | 100% | 2021-10-15 | 2022-02-04 | 80d? |  | 291h | 291h | 17,977.25 | 12,200 | 17,977.25 |
| 7 | 2.1 | Identify vendors | 4.5d | 2021-09-01 A | 2021-09-07 A | 26, 73 | 100% | 2021-10-15 | 2021-10-26 | 7d? | George Olmos; Norman Micheals | 72h | 72h | 3,528 | 2,800 | 3,528 |
| 8 | 2.2 | Develop and Issue RFQ | 3.88d | 2021-09-07 A | 2021-09-13 A | 73, 26 | 100% | 2021-10-15 | 2021-10-25 | 6d? | George Olmos; Norman Micheals | 62h | 62h | 3,038 | 2,400 | 3,038 |
| 9 | 2.3 | Issue sample (production equivalent) | 7.5d | 2021-09-21 A | 2021-10-01 A | 26, 7, 8, 74 | 100% | 2021-11-10 | 2021-11-17 | 5d? | Jovanna Soto | 60h | 60h | 4,500 | 3,000 | 4,500 |
| 10 | 2.4 | Assess RFQ responses and select vendors | 6.06d | 2021-12-21 A | 2021-12-29 A | 78, 14 | 100% | 2022-01-21 | 2022-02-04 | 10d? | Jovanna Soto; Tom Becher | 97h | 97h | 6,911.25 | 4,000 | 6,911.25 |
| 11 | 3 | **Supplier Quality** | 57.12d | 2021-10-01 A | 2021-12-21 A |  | 100% | 2021-11-17 | 2022-01-21 | 47d? |  | 318h | 318h | 22,822.5 | 14,400 | 22,822.5 |
| 12 | 3.1 | Perform supplier process capability | 17.12d | 2021-10-01 A | 2021-10-26 A | 9 | 100% | 2021-11-17 | 2021-12-07 | 14d? | Tom Becher | 137h | 137h | 9,247.5 | 5,600 | 9,247.5 |
| 13 | 3.2 | Approve sample parts | 10.12d | 2021-10-26 A | 2021-11-09 A | 12, 75 | 100% | 2021-12-07 | 2021-12-17 | 8d? | Jovanna Soto | 81h | 81h | 6,075 | 4,800 | 6,075 |
| 14 | 3.3 | Qualify Supplier | 12.5d | 2021-12-03 A | 2021-12-21 A | 77, 13 | 100% | 2022-01-07 | 2022-01-21 | 10d? | Jovanna Soto | 100h | 100h | 7,500 | 4,000 | 7,500 |
| 15 | 4 | **Design** | 54.88d | 2021-05-11 A | 2021-07-27 A |  | 100% | 2021-06-10 | 2021-09-09 | 65d? |  | 589h | 589h | 34,014.75 | 28,800 | 34,014.75 |
| 16 | 4.1 | Design and development plan | 3.88d | 2021-05-11 A | 2021-05-17 A | 5, 69 | 100% | 2021-06-10 | 2021-06-18 | 6d? | Kelly Sauseda; Lance Portier | 62h | 62h | 3,580.5 | 2,400 | 3,580.5 |
| 17 | 4.2 | Design specs. | 13.75d | 2021-05-17 A | 2021-06-03 A | 16 | 100% | 2021-06-18 | 2021-07-20 | 22d? | Lance Portier; Kelly Sauseda | 220h | 220h | 12,705 | 8,800 | 12,705 |
| 18 | 4.3 | Identify testing requirements | 6.25d | 2021-06-04 A | 2021-06-14 A | 17, 70, 50 | 100% | 2021-07-20 | 2021-08-03 | 10d? | Kelly Sauseda; Lance Portier | 100h | 100h | 5,775 | 4,000 | 5,775 |
| 19 | 4.4 | Risk analysis | 7.06d | 2021-06-14 A | 2021-06-23 A | 18 | 100% | 2021-08-03 | 2021-08-17 | 10d? | Kelly Sauseda; Lance Portier | 113h | 113h | 6,525.75 | 10,000 | 6,525.75 |
| 20 | 4.5 | Design labeling | 3.25d | 2021-07-19 A | 2021-07-22 A | 19, 71 | 100% | 2021-08-27 | 2021-09-03 | 5d? | Lance Portier; Kelly Sauseda | 52h | 52h | 3,003 | 2,000 | 3,003 |
| 21 | 4.6 | Approve design | 2.62d | 2021-07-22 A | 2021-07-27 A | 20 | 100% | 2021-09-03 | 2021-09-09 | 4d? | Lance Portier; Kelly Sauseda | 42h | 42h | 2,425.5 | 1,600 | 2,425.5 |
| 22 | 5 | **Engineering** | 101d | 2021-07-27 A | 2021-12-15 A |  | 100% | 2021-09-09 | 2022-01-18 | 93d? |  | 620h | 620h | 38,622.12 | 35,200 | 38,622.12 |
| 23 | 5.1 | Initial engineering specs. | 2.88d | 2021-07-27 A | 2021-07-30 A | 21 | 100% | 2021-09-09 | 2021-09-16 | 5d? | Tom Becher; Darryl Sandefur | 46h | 46h | 2,823.25 | 2,000 | 2,823.25 |
| 24 | 5.2 | Design verification activities | 4.19d | 2021-08-09 A | 2021-08-13 A | 23, 72 | 100% | 2021-09-16 | 2021-09-27 | 7d? | Tom Becher; Darryl Sandefur | 67h | 67h | 4,112.12 | 4,200 | 4,112.12 |
| 25 | 5.3 | Verification design review | 2.31d | 2021-08-13 A | 2021-08-17 A | 24 | 100% | 2021-09-27 | 2021-10-01 | 4d? | Tom Becher; Darryl Sandefur | 37h | 37h | 2,270.88 | 1,600 | 2,270.88 |
| 26 | 5.4 | Release pre-production specifications | 6d | 2021-08-17 A | 2021-08-25 A | 25 | 100% | 2021-10-01 | 2021-10-15 | 10d? | Tom Becher; Darryl Sandefur | 96h | 96h | 5,892 | 4,000 | 5,892 |
| 27 | 5.5 | Build functional model | 11.25d | 2021-09-01 A | 2021-09-16 A | 26, 73 | 100% | 2021-10-15 | 2021-11-10 | 18d? | Tom Becher; Darryl Sandefur | 180h | 180h | 11,047.5 | 10,800 | 11,047.5 |
| 28 | 5.6 | Design validation activities | 3.06d | 2021-11-12 A | 2021-11-17 A | 75, 27, 12 | 100% | 2021-12-07 | 2021-12-14 | 5d? | Darryl Sandefur; Jovanna Soto | 49h | 49h | 3,191.12 | 2,000 | 3,191.12 |
| 29 | 5.7 | Validation design review | 4.75d | 2021-11-19 A | 2021-11-25 A | 28, 76 | 100% | 2021-12-28 | 2022-01-03 | 4d? | Tom Becher | 38h | 38h | 2,565 | 4,000 | 2,565 |
| 30 | 5.8 | Approve model design | 5.12d | 2021-11-25 A | 2021-12-02 A | 29 | 100% | 2022-01-03 | 2022-01-07 | 4d? | Darryl Sandefur | 41h | 41h | 2,265.25 | 2,400 | 2,265.25 |
| 31 | 5.9 | Design transfer activities | 8.25d | 2021-12-03 A | 2021-12-15 A | 30, 36, 77 | 100% | 2022-01-07 | 2022-01-18 | 7d? | Tom Becher | 66h | 66h | 4,455 | 4,200 | 4,455 |

| ID | WBS | Task | Duration | Start | Finish | Predecessors | Complete | Baseline start | Baseline finish | Baseline duration | Resources | Work | Actual work | Cost | Baseline cost | Actual cost |
| --- | --- | --- | --- | --- | --- | --- | --- | --- | --- | --- | --- | --- | --- | --- | --- | --- |
| 32 | 6 | **Engineering Quality** | 78.62d | 2021-09-01 A | 2021-12-20 A |  | 100% | 2021-10-15 | 2022-01-21 | 70d? |  | 389h | 389h | 26,148.5 | 16,600 | 26,148.5 |
| 33 | 6.1 | Evaluate design specifications | 14.88d | 2021-09-01 A | 2021-09-21 A | 73, 26 | 100% | 2021-10-15 | 2021-10-29 | 10d? | Jovanna Soto | 119h | 119h | 8,925 | 4,000 | 8,925 |
| 34 | 6.2 | Develop testing protocol for prototype | 10.25d | 2021-09-21 A | 2021-10-06 A | 26, 33, 74 | 100% | 2021-11-10 | 2021-11-22 | 8d? | Darryl Sandefur | 82h | 82h | 4,530.5 | 3,200 | 4,530.5 |
| 35 | 6.3 | Test prototype | 12.75d | 2021-10-26 A | 2021-11-12 A | 75, 34, 27, 12 | 100% | 2021-12-07 | 2021-12-21 | 10d? | Darryl Sandefur | 102h | 102h | 5,635.5 | 4,000 | 5,635.5 |
| 36 | 6.4 | Evaluate results of tests and identify weaknesses | 7.38d | 2021-11-19 A | 2021-11-30 A | 76, 35 | 100% | 2021-12-28 | 2022-01-05 | 6d? | Jovanna Soto | 59h | 59h | 4,425 | 2,400 | 4,425 |
| 37 | 6.5 | Product release meetings | 3.38d | 2021-12-15 A | 2021-12-20 A | 31, 36, 30 | 100% | 2022-01-18 | 2022-01-21 | 3d? | Yukio Ashida | 27h | 27h | 2,632.5 | 3,000 | 2,632.5 |
| 38 | 7 | **Manufacturing** | 68.5d | 2021-10-26 A | 2022-01-28 A |  | 100% | 2021-12-07 | 2022-03-11 | 68.5d? |  | 574h | 574h | 35,143.5 | 22,600 | 35,143.5 |
| 39 | 7.1 | Process engineering plan | 17.62d | 2021-10-26 A | 2021-11-19 A | 27, 12, 75 | 100% | 2021-12-07 | 2021-12-28 | 15d? | Tom Becher | 141h | 141h | 9,517.5 | 6,000 | 9,517.5 |
| 40 | 7.2 | Develop production plan | 8.25d | 2021-12-03 A | 2021-12-15 A | 77, 36, 29, 39 | 100% | 2022-01-07 | 2022-01-17 | 6d? | Darryl Sandefur | 66h | 66h | 3,646.5 | 2,400 | 3,646.5 |
| 41 | 7.3 | Develop production control plan | 11.12d | 2021-12-21 A | 2022-01-05 A | 40, 14, 78 | 100% | 2022-01-21 | 2022-02-02 | 8.5d? | Darryl Sandefur | 89h | 89h | 4,917.25 | 3,400 | 4,917.25 |
| 42 | 7.4 | Approve production parts | 3.31d | 2022-01-05 A | 2022-01-10 A | 41 | 100% | 2022-02-02 | 2022-02-09 | 5d? | Tom Becher; Darryl Sandefur | 53h | 53h | 3,252.88 | 2,000 | 3,252.88 |
| 43 | 7.5 | Contracting for deliveries | 5.12d | 2022-01-10 A | 2022-01-18 A | 42, 10 | 100% | 2022-02-09 | 2022-02-21 | 8d? | Tom Becher; Darryl Sandefur | 82h | 82h | 5,032.75 | 3,200 | 5,032.75 |
| 44 | 7.6 | Submit production purchase order | 1.31d | 2022-01-18 A | 2022-01-19 A | 43, 79 | 100% | 2022-02-21 | 2022-02-23 | 2d? | Tom Becher; Darryl Sandefur | 21h | 21h | 1,288.88 | 800 | 1,288.88 |
| 45 | 7.7 | Production pilot test | 3.19d | 2022-01-19 A | 2022-01-24 A | 44, 37 | 100% | 2022-02-23 | 2022-03-02 | 5d? | Tom Becher; Darryl Sandefur | 51h | 51h | 3,130.12 | 2,000 | 3,130.12 |
| 46 | 7.8 | Debugging production system | 2.44d | 2022-01-24 A | 2022-01-26 A | 45 | 100% | 2022-03-02 | 2022-03-08 | 4d? | Tom Becher; Darryl Sandefur | 39h | 39h | 2,393.62 | 1,600 | 2,393.62 |
| 47 | 7.9 | Production release | 2d | 2022-01-27 A | 2022-01-28 A | 46 | 100% | 2022-03-08 | 2022-03-11 | 3d? | Tom Becher; Darryl Sandefur | 32h | 32h | 1,964 | 1,200 | 1,964 |
| 48 | 8 | **Commercialization** | 194.44d | 2021-05-11 A | 2022-02-07 A |  | 100% | 2021-06-10 | 2022-03-16 | 199.5d? |  | 683h | 683h | 56,477.5 | 39,560 | 56,477.5 |
| 49 | 8.1 | Develop preliminary marketing plan | 2.81d | 2021-05-11 A | 2021-05-14 A | 5, 69 | 100% | 2021-06-10 | 2021-06-17 | 5d? | Yukio Ashida; Kurt Zollinger | 45h | 45h | 3,600 | 3,600 | 3,600 |
| 50 | 8.2 | Develop marketing program | 8.44d | 2021-05-14 A | 2021-05-26 A | 49 | 100% | 2021-06-17 | 2021-07-08 | 15d? | Kurt Zollinger; Yukio Ashida | 135h | 135h | 10,800 | 10,800 | 10,800 |
| 51 | 8.3 | Train sales team | 24.88d | 2021-06-04 A | 2021-07-08 A | 50, 70 | 100% | 2021-07-20 | 2021-08-19 | 22d? | Kurt Zollinger | 199h | 199h | 12,437.5 | 8,800 | 12,437.5 |
| 52 | 8.4 | Advertising campaign | 31.38d | 2021-06-04 A | 2021-07-19 A | 70, 50 | 100% | 2021-07-20 | 2021-08-27 | 28d? | Yukio Ashida | 251h | 251h | 24,472.5 | 11,200 | 24,472.5 |
| 53 | 8.5 | Show functional model at trade show | 3.25d | 2021-10-29 A | 2021-11-04 A | 50, 75, 12, 27 | 100% | 2021-12-07 | 2021-12-10 | 3d? | Yukio Ashida | 26h | 26h | 2,535 | 2,160 | 2,535 |
| 54 | 8.6 | Product launch | 3.38d | 2022-02-02 A | 2022-02-07 A | 47, 51, 52, 53 | 100% | 2022-03-11 | 2022-03-16 | 3d? | Yukio Ashida | 27h | 27h | 2,632.5 | 3,000 | 2,632.5 |
| 55 | 9 | **Project Management** | 220.31d | 2021-03-31 A | 2022-02-02 A |  | 100% | 2021-03-31 | 2022-03-07 | 243.5d? |  | 1365h | 1365h | 110,979 | 136,000 | 110,979 |
| 56 | 9.1 | Project Management Period 1 | 18.06d | 2021-03-31 A | 2021-04-26 A |  | 100% | 2021-03-31 | 2021-05-05 | 25d? | Tom Becher; Darryl Sandefur | 289h | 289h | 17,737.38 | 25,000 | 17,737.38 |
| 57 | 9.2 | Project Management Period 2 | 10.06d | 2021-05-11 A | 2021-05-25 A | 56, 69 | 100% | 2021-06-10 | 2021-06-30 | 14d? | Tom Becher; Darryl Sandefur | 161h | 161h | 9,881.38 | 14,000 | 9,881.38 |
| 58 | 9.3 | Project Management Period 3 | 10.12d | 2021-06-04 A | 2021-06-18 A | 70, 57 | 100% | 2021-07-20 | 2021-08-09 | 14d? | Tom Becher; Darryl Sandefur | 162h | 162h | 9,942.75 | 14,000 | 9,942.75 |
| 59 | 9.4 | Project Management Period 4 | 14.62d | 2021-07-19 A | 2021-08-06 A | 58, 71 | 100% | 2021-08-27 | 2021-09-15 | 13d? | Yukio Ashida | 117h | 117h | 11,407.5 | 13,000 | 11,407.5 |
| 60 | 9.5 | Project Management Period 5 | 17d | 2021-08-09 A | 2021-08-31 A | 72, 59 | 100% | 2021-09-16 | 2021-10-07 | 15d? | Yukio Ashida | 136h | 136h | 13,260 | 15,000 | 13,260 |
| 61 | 9.6 | Project Management Period 6 | 10.25d | 2021-09-01 A | 2021-09-15 A | 60, 73 | 100% | 2021-10-15 | 2021-10-28 | 9d? | Yukio Ashida | 82h | 82h | 7,995 | 9,000 | 7,995 |
| 62 | 9.7 | Project Management Period 7 | 12.5d | 2021-09-21 A | 2021-10-08 A | 74, 61 | 100% | 2021-11-10 | 2021-11-25 | 11d? | Yukio Ashida | 100h | 100h | 9,750 | 11,000 | 9,750 |
| 63 | 9.8 | Project Management Period 8 | 3.38d | 2021-10-26 A | 2021-10-29 A | 62, 75 | 100% | 2021-12-07 | 2021-12-10 | 3d? | Yukio Ashida | 27h | 27h | 2,632.5 | 3,000 | 2,632.5 |
| 64 | 9.9 | Project Management Period 9 | 4.62d | 2021-11-19 A | 2021-11-25 A | 76, 63 | 100% | 2021-12-28 | 2022-01-03 | 4d? | Yukio Ashida | 37h | 37h | 3,607.5 | 4,000 | 3,607.5 |
| 65 | 9.10 | Project Management Period 10 | 5.62d | 2021-12-03 A | 2021-12-10 A | 64, 77 | 100% | 2022-01-07 | 2022-01-14 | 5d? | Yukio Ashida | 45h | 45h | 4,387.5 | 5,000 | 4,387.5 |
| 66 | 9.11 | Project Management Period 11 | 14.75d | 2021-12-21 A | 2022-01-11 A | 78, 65 | 100% | 2022-01-21 | 2022-02-09 | 13d? | Yukio Ashida | 118h | 118h | 11,505 | 13,000 | 11,505 |
| 67 | 9.12 | Project Management Period 12 | 11.38d | 2022-01-18 A | 2022-02-02 A | 66, 79 | 100% | 2022-02-21 | 2022-03-07 | 10d? | Yukio Ashida | 91h | 91h | 8,872.5 | 10,000 | 8,872.5 |

| ID | WBS | Task | Type | Duration | Start | Finish | Predecessors | Complete | Baseline start | Baseline finish | Baseline duration | Resources | Cost | Baseline cost | Actual cost |
| --- | --- | --- | --- | --- | --- | --- | --- | --- | --- | --- | --- | --- | --- | --- | --- |
| 68 | 10 | **Milestones** |  | 194.44d | 2021-05-11 A | 2022-02-07 A |  | 100% | 2021-06-10 | 2022-03-16 | 199.5d? |  | 15,421.75 | 25,000 | 15,421.75 |
| 69 | 10.1 | Milestone 1 | milestone | 0d | 2021-05-11 A | 2021-05-11 A | 56, 5 | 100% | 2021-06-10 | 2021-06-10 | 0d? | Period 1 Training Costs; Period 1 Managerial Action Costs; Period 1 Unallocated Resource Costs | 40 | 3,125 | 40 |
| 70 | 10.2 | Milestone 2 | milestone | 0d | 2021-06-03 A | 2021-06-03 A | 17, 50, 57 | 100% | 2021-07-20 | 2021-07-20 | 0d? | Period 2 Training Costs; Period 2 Managerial Action Costs; Period 2 Unallocated Resource Costs | 360 | 3,125 | 360 |
| 71 | 10.3 | Milestone 3 | milestone | 0d | 2021-07-19 A | 2021-07-19 A | 58, 52, 51, 19 | 100% | 2021-08-27 | 2021-08-27 | 0d? | Period 3 Training Costs; Period 3 Managerial Action Costs; Period 3 Unallocated Resource Costs | 60 | 3,125 | 60 |
| 72 | 10.4 | Milestone 4 | milestone | 0d | 2021-08-06 A | 2021-08-06 A | 23, 59 | 100% | 2021-09-16 | 2021-09-16 | 0d? | Period 4 Training Costs; Period 4 Managerial Action Costs; Period 4 Unallocated Resource Costs | 663.75 | 3,125 | 663.75 |
| 73 | 10.5 | Milestone 5 | milestone | 0d | 2021-08-31 A | 2021-08-31 A | 60, 26 | 100% | 2021-10-15 | 2021-10-15 | 0d? | Period 5 Training Costs; Period 5 Managerial Action Costs; Period 5 Unallocated Resource Costs | 4,851 | 3,125 | 4,851 |
| 74 | 10.6 | Milestone 6 | milestone | 0d | 2021-09-21 A | 2021-09-21 A | 27, 33, 8, 7, 61 | 100% | 2021-11-10 | 2021-11-10 | 0d? | Period 6 Training Costs; Period 6 Managerial Action Costs; Period 6 Unallocated Resource Costs | 4,638 | 3,125 | 4,638 |
| 75 | 10.7 | Milestone 7 | milestone | 0d | 2021-10-26 A | 2021-10-26 A | 62, 12, 34 | 100% | 2021-12-07 | 2021-12-07 | 0d? | Period 7 Training Costs; Period 7 Managerial Action Costs; Period 7 Unallocated Resource Costs | 4,449 | 3,125 | 4,449 |
| 76 | 10.8 | Milestone 8 | milestone | 0d | 2021-11-19 A | 2021-11-19 A | 28, 39, 13, 63, 53, 35 | 100% | 2021-12-28 | 2021-12-28 | 0d? | Period 8 Training Costs; Period 8 Managerial Action Costs; Period 8 Unallocated Resource Costs | 40 | 3,125 | 40 |
| 77 | 10.9 | Milestone 9 | milestone | 0d | 2021-12-02 A | 2021-12-02 A | 64, 36, 30 | 100% | 2022-01-07 | 2022-01-07 | 0d? | Period 9 Training Costs; Period 9 Managerial Action Costs; Period 9 Unallocated Resource Costs | 240 |  | 240 |
| 78 | 10.10 | Milestone 10 | milestone | 0d | 2021-12-21 A | 2021-12-21 A | 40, 37, 14, 65 | 100% | 2022-01-21 | 2022-01-21 | 0d? | Period 10 Training Costs; Period 10 Managerial Action Costs; Period 10 Unallocated Resource Costs | 40 |  | 40 |
| 79 | 10.11 | Milestone 11 | milestone | 0d | 2022-01-18 A | 2022-01-18 A | 66, 43 | 100% | 2022-02-21 | 2022-02-21 | 0d? | Period 11 Training Costs; Period 11 Managerial Action Costs; Period 11 Unallocated Resource Costs | 40 |  | 40 |
| 80 | 10.12 | Milestone 12 | milestone | 0d | 2022-02-07 A | 2022-02-07 A | 67, 54 | 100% | 2022-03-16 | 2022-03-16 | 0d? | Period 12 Training Costs; Period 12 Managerial Action Costs; Period 12 Unallocated Resource Costs |  |  |  |
